Schedule from MS Project, 2026-10-13 to 2027-03-01.

## Calendars

- 标准: Mon-Fri 08:00-12:00, 13:00-17:00; Sat-Sun off.

## Resources

| Resource |
| --- |
| 总负责人 |
| 后端开发A |
| 后端开发B |
| 前端开发 |
| 算法工程师 |
| 实施与测试 |

## Schedule

| ID | WBS | Task | Type | Duration | Start | Finish | Predecessors | Baseline start | Baseline finish | Baseline duration | Total slack | Resources | Work |
| --- | --- | --- | --- | --- | --- | --- | --- | --- | --- | --- | --- | --- | --- |
| 1 | 1 | **矿井货车倒矿智能管控系统开发项目** |  | 100d | 2026-10-13 | 2027-03-01 |  | 2026-10-13 | 2027-03-01 | 100d | 0d |  | 2920h |
| 2 | 1.1 | **1. 项目启动与需求确认** |  | 25d | 2026-10-13 | 2026-11-16 |  | 2026-10-13 | 2026-11-16 | 25d | 0d |  | 664h |
| 3 | 1.1.1 | 1.1 现场调研与需求澄清 |  | 5d | 2026-10-13 | 2026-10-19 |  | 2026-10-13 | 2026-10-19 | 5d | 0d | 总负责人 | 40h |
| 4 | 1.1.2 | 1.2 需求规格说明书编制 |  | 5d | 2026-10-20 | 2026-10-26 | 3 | 2026-10-20 | 2026-10-26 | 5d | 0d | 实施与测试; 总负责人 | 80h |
| 5 | 1.1.3 | 1.3 需求评审与基线确认 |  | 2d | 2026-10-27 | 2026-10-28 | 4 | 2026-10-27 | 2026-10-28 | 2d | 0d | 总负责人 | 16h |
| 6 | 1.1.4 | 里程碑：需求基线 V1.0 确认 | milestone, manual | 0d | 2026-10-13 | 2026-10-13 |  | 2026-10-13 | 2026-10-13 | 0d |  |  |  |
| 7 | 1.1.5 | 1.4 概要设计与详细设计 |  | 10d | 2026-10-29 | 2026-11-11 | 5 | 2026-10-29 | 2026-11-11 | 10d | 0d | 后端开发A; 后端开发B; 前端开发; 算法工程师; 总负责人 | 400h |
| 8 | 1.1.6 | 1.5 数据库与接口设计 |  | 8d | 2026-11-05 | 2026-11-16 | 7SS+5d | 2026-11-05 | 2026-11-16 | 8d | 0d | 后端开发A; 后端开发B | 128h |
| 9 | 1.2 | **2. 系统开发** |  | 25d | 2026-11-03 | 2026-12-07 |  | 2026-11-03 | 2026-12-07 | 25d | 10d |  | 1552h |
| 10 | 1.2.1 | 2.1 车牌识别与档案管理模块 |  | 15d | 2026-11-03 | 2026-11-23 | 7SS+3d | 2026-11-03 | 2026-11-23 | 15d | 70d | 后端开发A; 算法工程师 | 240h |
| 11 | 1.2.2 | 2.2 卸货次数自动统计模块 |  | 20d | 2026-11-05 | 2026-12-02 | 7SS+5d | 2026-11-05 | 2026-12-02 | 20d | 63d | 后端开发A; 后端开发B | 320h |
| 12 | 1.2.3 | 2.3 电子围栏与轨迹管控模块 |  | 18d | 2026-11-05 | 2026-11-30 | 7SS+5d | 2026-11-05 | 2026-11-30 | 18d | 65d | 后端开发B; 算法工程师 | 288h |
| 13 | 1.2.4 | 2.4 数据统计与可视化看板 |  | 10d | 2026-11-10 | 2026-11-23 | 7SS+8d | 2026-11-10 | 2026-11-23 | 10d | 70d | 后端开发A; 前端开发 | 160h |
| 14 | 1.2.5 | 2.5 预警处置与工单闭环 |  | 10d | 2026-11-10 | 2026-11-23 | 7SS+8d | 2026-11-10 | 2026-11-23 | 10d | 70d | 后端开发B; 前端开发 | 160h |
| 15 | 1.2.6 | 2.6 对外接口对接（地磅/视频/ERP/定位） |  | 15d | 2026-11-17 | 2026-12-07 | 8 | 2026-11-17 | 2026-12-07 | 15d | 0d | 后端开发A; 实施与测试 | 240h |
| 16 | 1.2.7 | 2.7 移动端 H5 应用 |  | 8d | 2026-11-12 | 2026-11-23 | 7SS+10d | 2026-11-12 | 2026-11-23 | 8d | 70d | 前端开发 | 64h |
| 17 | 1.2.8 | 2.8 系统管理与安全模块 |  | 10d | 2026-11-05 | 2026-11-18 | 7SS+5d | 2026-11-05 | 2026-11-18 | 10d | 73d | 后端开发B | 80h |
| 18 | 1.3 | **3. 测试与部署** |  | 18d | 2026-12-08 | 2026-12-31 |  | 2026-12-08 | 2026-12-31 | 18d | 0d |  | 352h |
| 19 | 1.3.1 | 3.1 集成测试与性能测试 |  | 8d | 2026-12-08 | 2026-12-17 | 15 | 2026-12-08 | 2026-12-17 | 8d | 0d | 后端开发A; 实施与测试; 总负责人 | 192h |
| 20 | 1.3.2 | 3.2 内网部署与数据初始化 |  | 5d | 2026-12-18 | 2026-12-24 | 19 | 2026-12-18 | 2026-12-24 | 5d | 0d | 后端开发B; 实施与测试 | 80h |
| 21 | 1.3.3 | 里程碑：系统上线试运行 | milestone, manual | 0d | 2026-12-25 | 2026-12-25 | 20 | 2026-12-25 | 2026-12-25 | 0d |  |  |  |
| 22 | 1.3.4 | 3.3 接口联调与问题修复 |  | 5d | 2026-12-25 | 2026-12-31 | 20 | 2026-12-25 | 2026-12-31 | 5d | 42d | 后端开发A; 实施与测试 | 80h |
| 23 | 1.4 | **4. 培训与试运行** |  | 44d | 2026-12-25 | 2027-02-24 |  | 2026-12-25 | 2027-02-24 | 44d | 0d |  | 304h |
| 24 | 1.4.1 | 4.1 培训 3 场次（12 课时） |  | 4d | 2026-12-25 | 2026-12-30 | 20 | 2026-12-25 | 2026-12-30 | 4d | 0d | 实施与测试; 总负责人 | 64h |
| 25 | 1.4.2 | 4.2 连续试运行 2 个月 |  | 40d | 2026-12-31 | 2027-02-24 | 24 | 2026-12-31 | 2027-02-24 | 40d | 0d |  |  |
| 26 | 1.4.3 | 4.3 缺陷修复与性能调优 |  | 10d | 2027-01-04 | 2027-01-15 | 25SS+2d | 2027-01-04 | 2027-01-15 | 10d | 28d | 后端开发A; 后端开发B; 算法工程师 | 240h |

| ID | WBS | Task | Type | Duration | Start | Finish | Predecessors | Baseline start | Baseline finish | Baseline duration | Total slack | Resources | Work |
| --- | --- | --- | --- | --- | --- | --- | --- | --- | --- | --- | --- | --- | --- |
| 27 | 1.5 | **5. 验收与收尾** |  | 3d | 2027-02-25 | 2027-03-01 |  | 2027-02-25 | 2027-03-01 | 3d | 0d |  | 48h |
| 28 | 1.5.1 | 5.1 最终验收 |  | 2d | 2027-02-25 | 2027-02-26 | 26, 25 | 2027-02-25 | 2027-02-26 | 2d | 0d | 实施与测试; 总负责人 | 32h |
| 29 | 1.5.2 | 里程碑：项目验收通过 | milestone | 0d | 2027-02-26 | 2027-02-26 | 28 | 2027-02-26 | 2027-02-26 | 0d | 1d |  |  |
| 30 | 1.5.3 | 5.2 文档移交与质保启动 |  | 1d | 2027-03-01 | 2027-03-01 | 28 | 2027-03-01 | 2027-03-01 | 1d | 0d | 实施与测试; 总负责人 | 16h |
